Schedule from MS Project, 2024-11-06 to 2024-12-04, costs in €.

## Calendars

- Estándar: Mon-Fri 09:00-13:00, 15:00-19:00; Sat-Sun off.

## Resources

| Resource | Group | Rate |
| --- | --- | --- |
| Desarrollador Java | Trabajadores A | 39 |
| Arquitecto Java | Trabajadores A | 50 |
| Gestor de proyecto (Iván) |  | 53.39 |
| Análista de sistemas (Iván) |  | 37.72 |
| Análista de sistemas (Rafa) |  | 37.72 |
| Análista de sistemas (Mohamed) |  | 37.72 |
| Análista de sistemas (Francisco) |  | 37.72 |
| Análista de sistemas (Juan Antonio) |  | 37.72 |
| Gestor de proyecto (Juan Antonio) |  | 53.39 |
| Especialista en pruebas (Rafa) |  | 26.07 |
| Especialista en pruebas (Mohamed) |  | 26.07 |
| Especialista en pruebas (Francisco) |  | 26.07 |
| Especialista en pruebas (Juan Antonio) |  | 26.07 |
| Especialista en pruebas (Iván) |  | 26.07 |

## Schedule

| ID | WBS | Task | Duration | Start | Finish | Predecessors | Total slack | Free slack | Constraint | Resources | Work | Cost |
| --- | --- | --- | --- | --- | --- | --- | --- | --- | --- | --- | --- | --- |
| 1 | 1 | **Proyecto** | 21d? | 2024-11-06 09:00 | 2024-12-04 19:00 |  |  |  |  |  | 147.75h | 5,435.4 |
| 2 | 1.1 | **Ejecución** | 21d? | 2024-11-06 09:00 | 2024-12-04 19:00 |  |  |  |  |  | 121.67h | 4,589.39 |
| 3 | 1.1.1 | **Incremento 1** | 6d? | 2024-11-06 09:00 | 2024-11-13 19:00 |  |  |  |  |  | 52.55h | 1,982.19 |
| 4 | 1.1.1.1 | Aprendizaje de la tecnología | 5h | 2024-11-06 09:00 | 2024-11-06 16:00 |  | 12.96d | 0d |  | Análista de sistemas (Francisco); Análista de sistemas (Iván); Análista de sistemas (Juan Antonio); Análista de sistemas (Mohamed); Análista de sistemas (Rafa) | 25h | 943 |
| 5 | 1.1.1.2 | Configuración de proyecto | 2h | 2024-11-06 16:00 | 2024-11-06 18:00 | 4 | 12.96d | 2.12d |  | Análista de sistemas (Rafa) | 2h | 75.44 |
| 6 | 1.1.1.3 | **Registro y Loggin** | 4h? | 2024-11-11 09:00 | 2024-11-11 13:00 | 5 |  |  |  |  | 13.9h | 524.31 |
| 7 | 1.1.1.3.1 | Funcionalidad de registro backend | 2.08h | 2024-11-07 16:55 | 2024-11-07 19:00 |  | 12.84d | 1d | finish no earlier than 2024-11-07 19:00 | Análista de sistemas (Rafa) | 2.08h | 78.46 |
| 8 | 1.1.1.3.2 | Funcionalidad de registro frontend | 1.91h | 2024-11-11 09:00 | 2024-11-11 10:54 | 7 | 11.84d |  |  | Análista de sistemas (Juan Antonio) | 1.91h | 72.05 |
| 9 | 1.1.1.3.3 | Funcionalidad de login backend | 8h | 2024-11-07 09:00 | 2024-11-07 19:00 |  | 12.84d | 1d | start no earlier than 2024-11-07 09:00 | Análista de sistemas (Juan Antonio) | 8h | 301.76 |
| 10 | 1.1.1.3.4 | Funcionalidad de login frontend | 1.91h | 2024-11-11 09:00 | 2024-11-11 10:54 | 9 | 11.84d |  |  | Análista de sistemas (Francisco) | 1.91h | 72.05 |
| 11 | 1.1.1.4 | **Listar productos** | 2d | 2024-11-07 09:00 | 2024-11-08 19:00 |  |  |  |  |  | 5.55h | 209.35 |
| 12 | 1.1.1.4.1 | Cargar productos backend | 3.55h | 2024-11-07 09:00 | 2024-11-07 12:33 |  | 14.39d | 0.56d |  | Análista de sistemas (Iván) | 3.55h | 133.91 |
| 13 | 1.1.1.4.2 | Mostrar productos frontend | 2h | 2024-11-08 09:00 | 2024-11-08 11:00 | 12 | 18.75d |  | start no earlier than 2024-11-08 09:00 | Análista de sistemas (Iván) | 2h | 75.44 |
| 14 | 1.1.1.5 | **Perfil administrador** | 0.26d | 2024-11-11 15:00 | 2024-11-11 17:06 | 6 | 11.57d | 0.24d |  |  | 2.1h | 79.21 |
| 15 | 1.1.1.5.1 | Crear perfil administrador backend | 1.05h | 2024-11-11 15:00 | 2024-11-11 16:03 |  | 11.57d | 0d |  | Análista de sistemas (Francisco) | 1.05h | 39.61 |
| 16 | 1.1.1.5.2 | Crear vista administrador frontend | 1.05h | 2024-11-11 16:03 | 2024-11-11 17:06 | 15 | 11.57d |  |  | Análista de sistemas (Francisco) | 1.05h | 39.61 |
| 17 | 1.1.1.6 | **Registrar productos** | 0.5d | 2024-11-12 09:00 | 2024-11-12 13:00 | 14 | 11.34d | 1.5d |  |  | 4h | 150.88 |
| 18 | 1.1.1.6.1 | Registrar productos con rol de administrador (backend) | 2h | 2024-11-12 09:00 | 2024-11-12 11:00 |  | 11.34d | 0d | start no earlier than 2024-11-12 09:00 | Análista de sistemas (Mohamed) | 2h | 75.44 |
| 19 | 1.1.1.6.2 | Crear vista de registro de productos con rol de administrador (front) | 2h | 2024-11-12 11:00 | 2024-11-12 13:00 | 18 | 11.34d |  | start no earlier than 2024-11-12 09:00 | Análista de sistemas (Mohamed) | 2h | 75.44 |
| 20 | 1.1.2 | **Incremento 2** | 6d? | 2024-11-13 09:00 | 2024-11-20 19:00 | 3 |  |  |  |  | 26.25h | 990.15 |
| 21 | 1.1.2.1 | **Cesta** | 1.88d | 2024-11-13 09:00 | 2024-11-14 18:00 |  | 10.86d | 3.12d |  |  | 15h | 565.8 |
| 22 | 1.1.2.1.1 | Crear cesta (backend) | 5h | 2024-11-13 09:00 | 2024-11-13 16:00 |  | 10.86d | 0d |  | Análista de sistemas (Rafa) | 5h | 188.6 |
| 23 | 1.1.2.1.2 | Crear vista de la cesta (frontend) | 10h | 2024-11-13 16:00 | 2024-11-14 18:00 | 22 | 10.86d |  |  | Análista de sistemas (Francisco) | 10h | 377.2 |
| 24 | 1.1.2.2 | **Componente de busqueda** | 0.9d | 2024-11-14 15:00 | 2024-11-15 12:10 | 11, 27 | 10.34d |  |  |  |  |  |
| 25 | 1.1.2.2.1 | Crear componente de búsqueda en catálogo (backend) | 4h | 2024-11-14 15:00 | 2024-11-14 19:00 |  | 10.34d | 0d |  |  |  |  |
| 26 | 1.1.2.2.2 | Crear componente de búsqueda en catálogo (frontend) | 3.17h | 2024-11-15 09:00 | 2024-11-15 12:10 | 25 | 10.34d |  |  |  |  |  |

| ID | WBS | Task | Duration | Start | Finish | Predecessors | Total slack | Free slack | Constraint | Resources | Work | Cost |
| --- | --- | --- | --- | --- | --- | --- | --- | --- | --- | --- | --- | --- |
| 27 | 1.1.2.3 | **Catálogo** | 1.5d | 2024-11-13 09:00 | 2024-11-14 13:00 |  | 10.34d | 0d |  |  | 8h | 301.76 |
| 28 | 1.1.2.3.1 | Crear catalogo (backend) | 4h | 2024-11-13 09:00 | 2024-11-13 13:00 |  | 10.84d | 0.5d |  | Análista de sistemas (Mohamed) | 4h | 150.88 |
| 29 | 1.1.2.3.2 | Crear catalogo (Frontend) | 4h | 2024-11-14 09:00 | 2024-11-14 13:00 | 28 | 10.34d |  | start no earlier than 2024-11-14 09:00 | Análista de sistemas (Mohamed) | 4h | 150.88 |
| 30 | 1.1.2.4 | **Modificar productos** | 1.12d | 2024-11-14 09:00 | 2024-11-15 10:00 | 17 | 10.61d |  |  |  | 3.25h | 122.59 |
| 31 | 1.1.2.4.1 | Modificar productos con rol de administrador (backend) | 2.25h | 2024-11-14 09:00 | 2024-11-14 11:15 |  | 11.33d | 0.72d | start no earlier than 2024-11-14 09:00 | Análista de sistemas (Mohamed) | 2.25h | 84.87 |
| 32 | 1.1.2.4.2 | Crear vista de modificar productos con rol de administrador (front) | 1h | 2024-11-15 09:00 | 2024-11-15 10:00 | 31 | 10.61d |  | start no earlier than 2024-11-15 09:00 | Análista de sistemas (Iván) | 1h | 37.72 |
| 33 | 1.1.3 | **Incremento 3** | 6d? | 2024-11-20 09:00 | 2024-11-27 19:00 | 20 |  |  |  |  | 27.33h | 1,030.89 |
| 34 | 1.1.3.1 | **Proceso de compra** | 1.75d | 2024-11-20 09:00 | 2024-11-21 17:00 | 21 | 7.73d | 0d |  |  | 14h | 528.08 |
| 35 | 1.1.3.1.1 | Proceso de compra (backend) | 8h | 2024-11-20 09:00 | 2024-11-20 19:00 |  | 7.73d | 0d |  | Análista de sistemas (Rafa) | 8h | 301.76 |
| 36 | 1.1.3.1.2 | Proceso de compra (fronted) | 6h | 2024-11-21 09:00 | 2024-11-21 17:00 | 35 | 7.73d |  |  | Análista de sistemas (Francisco) | 6h | 226.32 |
| 37 | 1.1.3.2 | Envío de correo automático | 4.13h | 2024-11-21 17:00 | 2024-11-22 11:07 | 34 | 7.73d |  |  | Análista de sistemas (Iván) | 4.13h | 155.78 |
| 38 | 1.1.3.3 | **Panel administrador del sistema** | 0.9d | 2024-11-20 09:00 | 2024-11-20 18:12 | 14 | 9.1d |  |  |  | 9.2h | 347.02 |
| 39 | 1.1.3.3.1 | Panel administrador del sistema(backend) | 1h | 2024-11-20 09:00 | 2024-11-20 10:00 |  | 9.75d | 0d |  | Análista de sistemas (Juan Antonio) | 1h | 37.72 |
| 40 | 1.1.3.3.2 | Visualizar datos de los usuarios (backend) | 5h | 2024-11-20 09:00 | 2024-11-20 16:00 |  | 9.1d | 0d |  | Análista de sistemas (Juan Antonio) | 5h | 188.6 |
| 41 | 1.1.3.3.3 | Panel administrador del sistema (frontend) | 1h | 2024-11-20 10:00 | 2024-11-20 11:00 | 39 | 9.75d |  |  | Análista de sistemas (Iván) | 1h | 37.72 |
| 42 | 1.1.3.3.4 | Visualizar datos de los usuarios(frontend) | 2.2h | 2024-11-20 16:00 | 2024-11-20 18:12 | 40 | 9.1d |  |  | Análista de sistemas (Iván) | 2.2h | 82.98 |
| 43 | 1.1.4 | **Fin de fase de desarrollo** | 6d | 2024-11-27 09:00 | 2024-12-04 19:00 | 33 |  |  |  |  | 15.54h | 586.17 |
| 44 | 1.1.4.1 | Crear manual de usuario | 4.38h | 2024-11-27 09:00 | 2024-11-27 15:22 |  | 5.45d |  |  | Análista de sistemas (Juan Antonio) | 4.38h | 165.21 |
| 45 | 1.1.4.2 | Crear contenedor de la aplicación | 3.16h | 2024-11-28 15:50 | 2024-11-28 19:00 |  | 4d |  | finish no earlier than 2024-11-28 19:00 | Análista de sistemas (Mohamed) | 3.16h | 119.2 |
| 46 | 1.1.4.3 | Desplegar la aplicación | 8h | 2024-12-03 09:00 | 2024-12-03 19:00 |  | 1d |  | finish no earlier than 2024-12-03 19:00 | Análista de sistemas (Juan Antonio) | 8h | 301.76 |
| 47 | 1.2 | **Monitoreo y control** | 21d? | 2024-11-06 09:00 | 2024-12-04 19:00 |  |  |  |  |  | 26.08h | 846.01 |
| 48 | 1.2.1 | Creación de pruebas unitarias I | 7h | 2024-12-02 10:00 | 2024-12-02 19:00 |  | 2d |  | finish no earlier than 2024-12-02 19:00 | Especialista en pruebas (Iván) | 7h | 182.49 |
| 49 | 1.2.2 | Creación de pruebas unitarias II | 7h | 2024-12-02 10:00 | 2024-12-02 19:00 |  | 2d |  | finish no earlier than 2024-12-02 19:00 | Especialista en pruebas (Rafa) | 7h | 182.49 |
| 50 | 1.2.3 | Creación de pruebas automáticas I | 3h | 2024-11-28 09:00 | 2024-11-28 12:00 |  | 4.62d |  | start no earlier than 2024-11-28 09:00 | Especialista en pruebas (Iván) | 3h | 78.21 |
| 51 | 1.2.4 | Creación de pruebas automáticas II | 3h | 2024-11-28 09:00 | 2024-11-28 12:00 |  | 4.62d |  | start no earlier than 2024-11-28 09:00 | Especialista en pruebas (Francisco) | 3h | 78.21 |
| 52 | 1.2.5 | Crear informes | 6.08h | 2024-11-06 09:00 | 2024-11-06 17:04 |  | 20.24d |  |  | Gestor de proyecto (Juan Antonio) | 6.08h | 324.61 |
